Schedule from MS Project, 2019-11-27 to 2020-04-20, costs in ₽, A marks actual dates.
SPecialiST RePack

## Calendars

- Стандартный: Mon-Fri 09:00-13:00, 14:00-18:00; Sat-Sun off.

## Resources

| Resource | Unit | Rate | Notes |
| --- | --- | --- | --- |
| Заказчик |  |  |  |
| Разработчик |  | 200 |  |
| Персональный Компьютер | шт. | 6 |  |
| Программное обеспечение для создания документации | дн. | 9 | Microsoft Office 2013 |
| Принтер | шт. | 2 |  |
| Аренда помещения |  |  |  |
| Программное обеспечение для реализации проекта | дн. | 6 | Платформа ELMA / ELMA BPM Standard |
| Бумага | шт. | 1 |  |
| Картридж | мг. | 1 |  |

## Schedule

| ID | WBS | Task | Type | Duration | Start | Finish | Predecessors | Complete | Remaining | Baseline start | Baseline finish | Baseline duration | Total slack | Resources | Work | Actual work | Cost | Baseline cost | Actual cost |
| --- | --- | --- | --- | --- | --- | --- | --- | --- | --- | --- | --- | --- | --- | --- | --- | --- | --- | --- | --- |
| 1 | 1 | **Проект "Автоматизирванная система управления организационной деятельностью"** |  | 104d | 2019-11-27 A | 2020-04-20 |  | 7% | 96.34d | 2019-11-27 | 2020-04-20 | 104d | 0d | Аренда помещения [0.1%] | 2744h | 256h | 163,380 | 162,867 | 12,058 |
| 2 | 1.1 | **Этап 1. Инициация проекта** |  | 9d | 2019-11-27 A | 2019-12-09 |  | 78% | 2d | 2019-11-27 | 2019-12-09 | 9d | 0d |  | 288h | 256h | 15,258 | 15,237 | 12,058 |
| 3 | 1.1.1 | **Постановка задачи проекта** |  | 2d | 2019-11-27 A | 2019-11-28 A |  | 100% |  | 2019-11-27 | 2019-11-28 | 2d |  |  | 56h | 56h | 3,342 | 3,339 | 3,342 |
| 4 | 1.1.1.1 | Постановка задачи | manual | 1d | 2019-11-27 A | 2019-11-27 A |  | 100% |  | 2019-11-27 | 2019-11-27 | 1d |  | Заказчик; Разработчик | 16h | 16h | 1,600 | 1,600 | 1,600 |
| 5 | 1.1.1.2 | Утверждение задачи | manual | 1d | 2019-11-28 A | 2019-11-28 A | 4 | 100% |  | 2019-11-28 | 2019-11-28 | 1d |  | Бумага [3 шт.]; Заказчик; Персональный Компьютер [1 шт.]; Принтер [1 шт.]; Разработчик; Программное обеспечение для создания документации [1 дн.]; Картридж [3 мг.] | 40h | 40h | 1,742 | 1,739 | 1,742 |
| 6 | 1.1.2 | **Календарный план** |  | 3d | 2019-11-29 A | 2019-12-03 A |  | 100% |  | 2019-11-29 | 2019-12-03 | 3d |  |  | 120h | 120h | 5,224 | 5,216 | 5,224 |
| 7 | 1.1.2.1 | Разработка календарного плана | manual | 2d | 2019-11-29 A | 2019-12-02 A | 5 | 100% |  | 2019-11-29 | 2019-12-02 | 2d |  | Бумага [3 шт.]; Заказчик; Персональный Компьютер [1 шт.]; Принтер [1 шт.]; Разработчик; Программное обеспечение для создания документации [1 дн.]; Картридж [3 мг.] | 80h | 80h | 3,478 | 3,475 | 3,478 |
| 8 | 1.1.2.2 | Утверждение календарного плана | manual | 1d | 2019-12-03 A | 2019-12-03 A | 7 | 100% |  | 2019-12-03 | 2019-12-03 | 1d |  | Бумага [5 шт.]; Заказчик; Персональный Компьютер [1 шт.]; Принтер [1 шт.]; Разработчик; Программное обеспечение для создания документации [1 дн.]; Картридж [5 мг.] | 40h | 40h | 1,746 | 1,741 | 1,746 |
| 9 | 1.1.3 | **Устав проекта** |  | 4d | 2019-12-04 A | 2019-12-09 |  | 50% | 2d | 2019-12-04 | 2019-12-09 | 4d | 0d |  | 112h | 80h | 6,692 | 6,682 | 3,492 |
| 10 | 1.1.3.1 | Раработка Устава пректа | manual | 2d | 2019-12-04 A | 2019-12-05 A | 8 | 100% |  | 2019-12-04 | 2019-12-05 | 2d |  | Бумага [10 шт.]; Заказчик; Персональный Компьютер [1 шт.]; Принтер [1 шт.]; Разработчик; Программное обеспечение для создания документации [1 дн.]; Картридж [10 мг.] | 80h | 80h | 3,492 | 3,482 | 3,492 |
| 11 | 1.1.3.2 | Соласование Устава проекта | manual | 1d | 2019-12-06 | 2019-12-06 | 10 |  |  | 2019-12-06 | 2019-12-06 | 1d |  | Заказчик; Разработчик | 16h |  | 1,600 | 1,600 |  |
| 12 | 1.1.3.3 | Утверждение Устава проекта | manual | 1d | 2019-12-09 | 2019-12-09 | 11 |  |  | 2019-12-09 | 2019-12-09 | 1d |  | Заказчик; Разработчик | 16h |  | 1,600 | 1,600 |  |
| 13 | 1.2 | **Этап 2. Планирование проекта** |  | 34d | 2019-12-10 | 2020-01-24 |  |  |  | 2019-12-10 | 2020-01-24 | 34d | 0d |  | 984h |  | 58,248 | 58,146 |  |
| 14 | 1.2.1 | **Описание объекта автоматизации** |  | 5d | 2019-12-10 | 2019-12-16 |  |  |  | 2019-12-10 | 2019-12-16 | 5d | 0d |  | 112h |  | 8,258 | 8,257 |  |
| 15 | 1.2.1.1 | Сбор данных объекта автоматизации | manual | 2d | 2019-12-10 | 2019-12-11 | 12 |  |  | 2019-12-10 | 2019-12-11 | 2d |  | Заказчик; Персональный Компьютер [1 шт.]; Разработчик | 48h |  | 3,296 | 3,296 |  |
| 16 | 1.2.1.2 | Анализ данных объекта автоматизации | manual | 2d | 2019-12-12 | 2019-12-13 | 15 |  |  | 2019-12-12 | 2019-12-13 | 2d |  | Персональный Компьютер [1 шт.]; Разработчик | 32h |  | 3,296 | 3,296 |  |
| 17 | 1.2.1.3 | Согласование описания объекта автоматизации | manual | 1d | 2019-12-16 | 2019-12-16 | 16 |  |  | 2019-12-16 | 2019-12-16 | 1d |  | Бумага [1 шт.]; Заказчик; Персональный Компьютер [1 шт.]; Принтер [1 шт.]; Разработчик; Картридж [1 мг.] | 32h |  | 1,666 | 1,665 |  |
| 18 | 1.2.2 | **Выбор технических и програмных средств реализации** |  | 5d | 2019-12-17 | 2019-12-23 |  |  |  | 2019-12-17 | 2019-12-23 | 5d | 0d |  | 104h |  | 8,378 | 8,377 |  |
| 19 | 1.2.2.1 | Анализ существующих методов решения задачи | manual | 2d | 2019-12-17 | 2019-12-18 | 17 |  |  | 2019-12-17 | 2019-12-18 | 2d |  | Персональный Компьютер [1 шт.]; Разработчик; Программное обеспечение для создания документации [1 дн.] | 48h |  | 3,440 | 3,440 |  |
| 20 | 1.2.2.2 | Выбор технических и програмных средств реализации | manual | 2d | 2019-12-19 | 2019-12-20 | 19 |  |  | 2019-12-19 | 2019-12-20 | 2d |  | Разработчик | 16h |  | 3,200 | 3,200 |  |
| 21 | 1.2.2.3 | Утверждение выора технических и пограммных средств реализации | manual | 1d | 2019-12-23 | 2019-12-23 | 20 |  |  | 2019-12-23 | 2019-12-23 | 1d |  | Бумага [1 шт.]; Заказчик; Персональный Компьютер [1 шт.]; Принтер [1 шт.]; Разработчик; Программное обеспечение для создания документации [1 дн.]; Картридж [1 мг.] | 40h |  | 1,738 | 1,737 |  |
| 22 | 1.2.3 | **Анализ требований** |  | 21d | 2019-12-24 | 2020-01-21 |  |  |  | 2019-12-24 | 2020-01-21 | 21d | 0d |  | 680h |  | 36,336 | 36,236 |  |
| 23 | 1.2.3.1 | Требования к структуре и функционированию | manual | 2d | 2019-12-24 | 2019-12-25 | 21 |  |  | 2019-12-24 | 2019-12-25 | 2d |  | Заказчик; Персональный Компьютер [1 шт.]; Разработчик; Программное обеспечение для создания документации [1 дн.] | 64h |  | 3,440 | 3,440 |  |
| 24 | 1.2.3.2 | Требования к квалификации персонала системы и режиму его работы | manual | 2d | 2019-12-26 | 2019-12-27 | 23 |  |  | 2019-12-26 | 2019-12-27 | 2d |  | Заказчик; Персональный Компьютер [1 шт.]; Программное обеспечение для создания документации [1 дн.]; Разработчик | 64h |  | 3,440 | 3,440 |  |
| 25 | 1.2.3.3 | Показатели назначения | manual | 2d | 2019-12-30 | 2019-12-31 | 24 |  |  | 2019-12-30 | 2019-12-31 | 2d |  | Заказчик; Персональный Компьютер [1 шт.]; Программное обеспечение для создания документации [1 дн.]; Разработчик | 64h |  | 3,440 | 3,440 |  |
| 26 | 1.2.3.4 | Требования к надежности | manual | 2d | 2020-01-01 | 2020-01-02 | 25 |  |  | 2020-01-01 | 2020-01-02 | 2d |  | Заказчик; Персональный Компьютер [1 шт.]; Программное обеспечение для создания документации [1 дн.]; Разработчик | 64h |  | 3,440 | 3,440 |  |
| 27 | 1.2.3.5 | Требования к безопасности | manual | 2d | 2020-01-03 | 2020-01-06 | 26 |  |  | 2020-01-03 | 2020-01-06 | 2d |  | Заказчик; Персональный Компьютер [1 шт.]; Программное обеспечение для создания документации [1 дн.]; Разработчик | 64h |  | 3,440 | 3,440 |  |
| 28 | 1.2.3.6 | Требования к эргономике и технической эстетике | manual | 2d | 2020-01-07 | 2020-01-08 | 27 |  |  | 2020-01-07 | 2020-01-08 | 2d |  | Заказчик; Персональный Компьютер [1 шт.]; Программное обеспечение для создания документации [1 дн.]; Разработчик | 64h |  | 3,440 | 3,440 |  |
| 29 | 1.2.3.7 | Требования к эксплуатации, техническому обслуживанию | manual | 2d | 2020-01-09 | 2020-01-10 | 28 |  |  | 2020-01-09 | 2020-01-10 | 2d |  | Заказчик; Персональный Компьютер [1 шт.]; Программное обеспечение для создания документации [1 дн.]; Разработчик | 64h |  | 3,440 | 3,440 |  |
| 30 | 1.2.3.8 | Требования к защите информации | manual | 2d | 2020-01-13 | 2020-01-14 | 29 |  |  | 2020-01-13 | 2020-01-14 | 2d |  | Заказчик; Персональный Компьютер [1 шт.]; Программное обеспечение для создания документации [1 дн.]; Разработчик | 64h |  | 3,440 | 3,440 |  |
| 31 | 1.2.3.9 | Требования по сохранности информации при авариях | manual | 2d | 2020-01-15 | 2020-01-16 | 30 |  |  | 2020-01-15 | 2020-01-16 | 2d |  | Заказчик; Персональный Компьютер [1 шт.]; Программное обеспечение для создания документации [1 дн.]; Разработчик | 64h |  | 3,440 | 3,440 |  |
| 32 | 1.2.3.10 | Требования по стандартизации и унификации | manual | 2d | 2020-01-17 | 2020-01-20 | 31 |  |  | 2020-01-17 | 2020-01-20 | 2d |  | Заказчик; Персональный Компьютер [1 шт.]; Программное обеспечение для создания документации [1 дн.]; Разработчик | 64h |  | 3,440 | 3,440 |  |
| 33 | 1.2.3.11 | Согласование требований | manual | 1d | 2020-01-21 | 2020-01-21 | 32 |  |  | 2020-01-21 | 2020-01-21 | 1d |  | Бумага [100 шт.]; Заказчик; Персональный Компьютер [1 шт.]; Принтер [1 шт.]; Программное обеспечение для создания документации [1 дн.]; Разработчик; Картридж [100 мг.] | 40h |  | 1,936 | 1,836 |  |

| ID | WBS | Task | Type | Duration | Start | Finish | Predecessors | Baseline start | Baseline finish | Baseline duration | Total slack | Resources | Work | Cost | Baseline cost |
| --- | --- | --- | --- | --- | --- | --- | --- | --- | --- | --- | --- | --- | --- | --- | --- |
| 34 | 1.2.4 | **Раработка технического задания** |  | 3d | 2020-01-22 | 2020-01-24 |  | 2020-01-22 | 2020-01-24 | 3d | 0d |  | 88h | 5,276 | 5,276 |
| 35 | 1.2.4.1 | Разработка техничского задания | manual | 2d | 2020-01-22 | 2020-01-23 | 33 | 2020-01-22 | 2020-01-23 | 2d |  | Персональный Компьютер [1 шт.]; Программное обеспечение для создания документации [1 дн.]; Разработчик | 48h | 3,440 | 3,440 |
| 36 | 1.2.4.2 | Утверждение технического задания | manual | 1d | 2020-01-24 | 2020-01-24 | 35 | 2020-01-24 | 2020-01-24 | 1d |  | Персональный Компьютер [1 шт.]; Программное обеспечение для создания документации [1 дн.]; Разработчик; Бумага [100 шт.]; Заказчик; Принтер [1 шт.] | 40h | 1,836 | 1,836 |
| 37 | 1.3 | **Этап 3. Реализация проекта** |  | 48d | 2020-01-27 | 2020-04-01 |  | 2020-01-27 | 2020-04-01 | 48d | 0d |  | 1072h | 66,958 | 66,868 |
| 38 | 1.3.1 | **Эскизный проект** |  | 14d | 2020-01-27 | 2020-02-13 |  | 2020-01-27 | 2020-02-13 | 14d | 0d |  | 384h | 23,970 | 23,970 |
| 39 | 1.3.1.1 | Разработка предварительных решений по функциональной структуре | manual | 4d | 2020-01-27 | 2020-01-30 | 36 | 2020-01-27 | 2020-01-30 | 4d |  | Персональный Компьютер [1 шт.]; Программное обеспечение для реализации проекта [1 дн.]; Разработчик | 96h | 6,784 | 6,784 |
| 40 | 1.3.1.2 | Разработка предварительных решений по программной реализации | manual | 4d | 2020-01-31 | 2020-02-05 | 39 | 2020-01-31 | 2020-02-05 | 4d |  | Персональный Компьютер [1 шт.]; Программное обеспечение для реализации проекта [1 дн.]; Разработчик | 96h | 6,784 | 6,784 |
| 41 | 1.3.1.3 | Разработка предварительных решений по разработке пользовательского интерфейса | manual | 4d | 2020-02-06 | 2020-02-11 | 40 | 2020-02-06 | 2020-02-11 | 4d |  | Персональный Компьютер [1 шт.]; Программное обеспечение для реализации проекта [1 дн.]; Разработчик | 96h | 6,784 | 6,784 |
| 42 | 1.3.1.4 | Утверждение предварительных решений | manual | 2d | 2020-02-12 | 2020-02-13 | 41 | 2020-02-12 | 2020-02-13 | 2d |  | Бумага [50 шт.]; Заказчик; Персональный Компьютер [1 шт.]; Принтер [1 шт.]; Программное обеспечение для реализации проекта [1 дн.]; Программное обеспечение для создания документации [1 дн.]; Разработчик | 96h | 3,618 | 3,618 |
| 43 | 1.3.2 | **Технический проект** |  | 31d | 2020-02-14 | 2020-03-27 |  | 2020-02-14 | 2020-03-27 | 31d | 0d |  | 576h | 37,588 | 37,538 |
| 44 | 1.3.2.1 | Разработка окончательной функциональной структуры | manual | 5d | 2020-02-14 | 2020-02-20 | 42 | 2020-02-14 | 2020-02-20 | 5d |  | Персональный Компьютер [1 шт.]; Программное обеспечение для реализации проекта [1 дн.]; Разработчик | 120h | 8,480 | 8,480 |
| 45 | 1.3.2.2 | Разработка окончательной организационной структуры | manual | 5d | 2020-02-26 | 2020-03-03 | 44 | 2020-02-26 | 2020-03-03 | 5d |  | Персональный Компьютер [1 шт.]; Программное обеспечение для реализации проекта [1 дн.]; Разработчик | 120h | 8,480 | 8,480 |
| 46 | 1.3.2.3 | Разработка решений по техническому обеспечению | manual | 5d | 2020-03-09 | 2020-03-13 | 45 | 2020-03-09 | 2020-03-13 | 5d |  | Персональный Компьютер [1 шт.]; Программное обеспечение для реализации проекта [1 дн.]; Разработчик | 120h | 8,480 | 8,480 |
| 47 | 1.3.2.4 | Программная реализация | manual | 5d | 2020-03-19 | 2020-03-25 | 46 | 2020-03-19 | 2020-03-25 | 5d |  | Персональный Компьютер [1 шт.]; Программное обеспечение для реализации проекта [1 дн.]; Разработчик | 120h | 8,480 | 8,480 |
| 48 | 1.3.2.5 | Утверждение окончательной структуры | manual | 2d | 2020-03-26 | 2020-03-27 | 47 | 2020-03-26 | 2020-03-27 | 2d |  | Бумага [50 шт.]; Заказчик; Персональный Компьютер [1 шт.]; Принтер [1 шт.]; Программное обеспечение для реализации проекта [1 дн.]; Программное обеспечение для создания документации [1 дн.]; Разработчик; Картридж [50 мг.] | 96h | 3,668 | 3,618 |
| 49 | 1.3.3 | **Алгоритм внедрения** |  | 3d | 2020-03-30 | 2020-04-01 |  | 2020-03-30 | 2020-04-01 | 3d | 0d |  | 112h | 5,400 | 5,360 |
| 50 | 1.3.3.1 | Разработка алгоритма внедрения | manual | 2d | 2020-03-30 | 2020-03-31 | 48 | 2020-03-30 | 2020-03-31 | 2d |  | Персональный Компьютер [1 шт.]; Программное обеспечение для реализации проекта [1 дн.]; Программное обеспечение для создания документации [1 дн.]; Разработчик | 64h | 3,536 | 3,536 |
| 51 | 1.3.3.2 | Утверждение алгоритма внедрения | manual | 1d | 2020-04-01 | 2020-04-01 | 50 | 2020-04-01 | 2020-04-01 | 1d |  | Бумага [40 шт.]; Заказчик; Персональный Компьютер [1 шт.]; Принтер [1 шт.]; Программное обеспечение для реализации проекта [1 дн.]; Программное обеспечение для создания документации [1 дн.]; Разработчик; Картридж [40 мг.] | 48h | 1,864 | 1,824 |
| 52 | 1.4 | **Этап 4. Подготовка к внедрению проекта** |  | 6d | 2020-04-02 | 2020-04-09 |  | 2020-04-02 | 2020-04-09 | 6d | 0d |  | 192h | 10,468 | 10,368 |
| 53 | 1.4.1 | **Тестирование системы** |  | 2d | 2020-04-02 | 2020-04-03 |  | 2020-04-02 | 2020-04-03 | 2d | 0d |  | 80h | 3,500 | 3,500 |
| 54 | 1.4.1.1 | Функциоальное тестирование | manual | 0.2d | 2020-04-02 | 2020-04-02 | 51 | 2020-04-02 | 2020-04-02 | 0.2d |  | Заказчик; Персональный Компьютер [1 шт.]; Программное обеспечение для реализации проекта [1 дн.]; Разработчик | 6.4h | 339.2 | 339.2 |
| 55 | 1.4.1.2 | Тестирование производительности | manual | 0.2d | 2020-04-02 | 2020-04-02 | 54 | 2020-04-02 | 2020-04-02 | 0.2d |  | Заказчик; Персональный Компьютер [1 шт.]; Программное обеспечение для реализации проекта [1 дн.]; Разработчик | 6.4h | 339.2 | 339.2 |
| 56 | 1.4.1.3 | Юзбилити-тестирование | manual | 0.5d | 2020-04-02 | 2020-04-02 | 55 | 2020-04-02 | 2020-04-02 | 0.5d |  | Заказчик; Персональный Компьютер [1 шт.]; Программное обеспечение для реализации проекта [1 дн.]; Разработчик | 16h | 848 | 848 |
| 57 | 1.4.1.4 | Тестирование безопасности | manual | 0.1d | 2020-04-02 | 2020-04-02 | 56 | 2020-04-02 | 2020-04-02 | 0.1d |  | Заказчик; Персональный Компьютер [1 шт.]; Программное обеспечение для реализации проекта [1 дн.]; Разработчик | 3.2h | 169.6 | 169.6 |
| 58 | 1.4.1.5 | Утверждение результатов тестирования | manual | 1d | 2020-04-03 | 2020-04-03 | 57 | 2020-04-03 | 2020-04-03 | 1d |  | Заказчик; Персональный Компьютер [1 шт.]; Программное обеспечение для реализации проекта [1 дн.]; Разработчик; Бумага [20 шт.]; Принтер [1 шт.]; Программное обеспечение для создания документации [1 дн.] | 48h | 1,804 | 1,804 |

| ID | WBS | Task | Type | Duration | Start | Finish | Predecessors | Baseline start | Baseline finish | Baseline duration | Total slack | Resources | Work | Cost | Baseline cost |
| --- | --- | --- | --- | --- | --- | --- | --- | --- | --- | --- | --- | --- | --- | --- | --- |
| 59 | 1.4.2 | **Пользовательская документация** |  | 3d | 2020-04-06 | 2020-04-08 |  | 2020-04-06 | 2020-04-08 | 3d | 0d |  | 80h | 5,272 | 5,172 |
| 60 | 1.4.2.1 | Подготовка пользовательской документации | manual | 2d | 2020-04-06 | 2020-04-07 | 58 | 2020-04-06 | 2020-04-07 | 2d |  | Бумага [100 шт.]; Персональный Компьютер [1 шт.]; Принтер [1 шт.]; Программное обеспечение для создания документации [1 дн.]; Разработчик; Картридж [100 мг.] | 64h | 3,672 | 3,572 |
| 61 | 1.4.2.2 | Утверждение пльзовательской документации | manual | 1d | 2020-04-08 | 2020-04-08 | 60 | 2020-04-08 | 2020-04-08 | 1d |  | Заказчик; Разработчик | 16h | 1,600 | 1,600 |
| 62 | 1.4.3 | **Обучение персонала** |  | 1d | 2020-04-09 | 2020-04-09 |  | 2020-04-09 | 2020-04-09 | 1d | 0d |  | 32h | 1,696 | 1,696 |
| 63 | 1.4.3.1 | Обучение персонала работе с системой | manual | 1d | 2020-04-09 | 2020-04-09 | 61 | 2020-04-09 | 2020-04-09 | 1d |  | Заказчик; Персональный Компьютер [1 шт.]; Программное обеспечение для реализации проекта [1 дн.]; Разработчик | 32h | 1,696 | 1,696 |
| 64 | 1.5 | **Этап 5. Завершение проекта** |  | 7d | 2020-04-10 | 2020-04-20 |  | 2020-04-10 | 2020-04-20 | 7d | 0d |  | 208h | 12,448 | 12,248 |
| 65 | 1.5.1 | Проверка соответствия проекта | manual | 2d | 2020-04-10 | 2020-04-13 | 63 | 2020-04-10 | 2020-04-13 | 2d |  | Заказчик; Персональный Компьютер [1 шт.]; Программное обеспечение для создания документации [1 дн.]; Разработчик | 64h | 3,440 | 3,440 |
| 66 | 1.5.2 | Устранение несоответствий проекта | manual | 2d | 2020-04-14 | 2020-04-15 | 65 | 2020-04-14 | 2020-04-15 | 2d |  | Персональный Компьютер [1 шт.]; Программное обеспечение для создания документации [1 дн.]; Разработчик | 48h | 3,440 | 3,440 |
| 67 | 1.5.3 | Составление отчета | manual | 2d | 2020-04-16 | 2020-04-17 | 66 | 2020-04-16 | 2020-04-17 | 2d |  | Бумага [200 шт.]; Персональный Компьютер [1 шт.]; Программное обеспечение для создания документации [1 дн.]; Разработчик; Принтер [1 шт.]; Программное обеспечение для реализации проекта [1 дн.]; Картридж [200 мг.] | 80h | 3,968 | 3,768 |
| 68 | 1.5.4 | Утверждение отчета | manual | 1d | 2020-04-20 | 2020-04-20 | 67 | 2020-04-20 | 2020-04-20 | 1d |  | Заказчик; Разработчик | 16h | 1,600 | 1,600 |
